# Term-Project-Planned-Solar

Schedule from MS Project, 2024-02-15 to 2024-09-26, costs in $.

## Calendars

- Standard: Mon-Fri 08:00-12:00, 13:00-17:00; Sat-Sun off.

## Resources

| Resource | Rate | Cost per use |
| --- | --- | --- |
| PM | 100 |  |
| ISE | 100 |  |
| EE | 100 |  |
| JS | 100 |  |
| SCM | 80 |  |
| GL 1 | 35 |  |
| GL 2 | 35 |  |
| GL 3 | 35 |  |
| GL 4 | 35 |  |
| GL 5 | 35 |  |
| GL 6 | 35 |  |
| GL 7 | 35 |  |
| GL 8 | 35 |  |
| IW 1 | 80 |  |
| IW 2 | 80 |  |
| IW 3 | 80 |  |
| IW 4 | 80 |  |
| IW 5 | 80 |  |
| IW 6 | 80 |  |
| ET 1 | 80 |  |
| ET 2 | 80 |  |
| ET 3 | 80 |  |
| ET 4 | 80 |  |
| ET 5 | 80 |  |
| ET 6 | 80 |  |
| DT | 100 |  |
| DC | 100 |  |
| TT | 100 |  |
| Project Buffer |  |  |
| Materials |  | 2215980 |
| SL | 100 |  |
| CE | 100 |  |

## Schedule

| ID | WBS | Task | Duration | Start | Finish | Predecessors | Total slack | Free slack | Resources | Work | Cost |
| --- | --- | --- | --- | --- | --- | --- | --- | --- | --- | --- | --- |
| 1 | 1 | **PREPARATION OF PROJECT PLAN** | 4d | 2024-02-15 | 2024-02-20 |  | 0d |  |  | 88h | 8,640 |
| 2 | 1.1 | Develop Project Plan, Scope, Charter | 2d | 2024-02-15 | 2024-02-16 |  | 0d |  | PM; JS | 32h | 3,200 |
| 3 | 1.2 | Form Team, Review Project Plans | 1d | 2024-02-19 | 2024-02-19 | 2 | 0d |  | EE; JS; PM; CE; ISE; SCM | 48h | 4,640 |
| 4 | 1.3 | Project Kickoff, Approve Baseline Plan | 1d | 2024-02-20 | 2024-02-20 | 3 | 0d |  | PM | 8h | 800 |
| 5 | 2 | **PREPARATION OF DETAILED DESIGN SPECIFICATIONS** | 18d | 2024-02-21 | 2024-03-15 |  | 0d |  |  | 48h | 4,800 |
| 6 | 2.1 | Develop Design Spec: Site Survey, Drawings, Bill of Materials | 1d | 2024-02-21 | 2024-02-21 | 4 | 0d |  | CE; ISE; JS | 24h | 2,400 |
| 7 | 2.2 | Prepare & Submit Permit Applications | 1d | 2024-02-22 | 2024-02-22 | 6 | 3d | 0d | CE | 8h | 800 |
| 8 | 2.3 | Receive Permits | 1d | 2024-03-15 | 2024-03-15 | 7FS+15d | 3d | 0d | PM; JS | 16h | 1,600 |
| 9 | 3 | **PROCUREMENT OF MATERIALS** | 23d | 2024-02-22 | 2024-03-25 |  | 0d |  |  | 72h | 2,221,380 |
| 10 | 3.1 | Conduct Supplier Search, RFQ Process | 3d | 2024-02-22 | 2024-02-26 | 6 | 0d |  | SCM | 24h | 1,920 |
| 11 | 3.2 | Select Suppliers, order material | 4d | 2024-02-27 | 2024-03-01 | 10 | 0d |  | SCM | 32h | 2,560 |
| 12 | 3.3 | Receive material | 1d | 2024-03-25 | 2024-03-25 | 11FS+15d | 0d |  | Materials; SCM; GL 1 | 16h | 2,216,900 |
| 13 | 4 | **PREPARATION OF SITE** | 3d | 2024-03-18 | 2024-03-20 |  | 3d |  |  | 96h | 5,440 |
| 14 | 4.1 | Clear lot and Fence | 2d | 2024-03-18 | 2024-03-19 | 8 | 3d | 0d | JS; GL 2; GL 3; GL 4 | 64h | 3,280 |
| 15 | 4.2 | Mark Pier Locations & Conduit Pathways | 1d | 2024-03-20 | 2024-03-20 | 14 | 3d |  | JS; CE; GL 5; GL 6 | 32h | 2,160 |
| 16 | 5 | **CONSTRUCTION OF FOUNDATION FOR SOLAR CANOPY & EV CHARGING STATION** | 11d | 2024-03-26 | 2024-04-09 |  | 0d |  |  | 472h | 27,960 |
| 17 | 5.1 | Dig Footings & Place Forms | 7d | 2024-03-26 | 2024-04-03 | 15, 12 | 0d |  | JS; DT; GL 1; GL 2; GL 3; GL 4 | 336h | 19,040 |
| 18 | 5.2 | Inspect Footings | 1d | 2024-04-04 | 2024-04-04 | 17 | 0d |  | CE; JS | 16h | 1,600 |
| 19 | 5.3 | Pour Concrete Piers | 3d | 2024-04-05 | 2024-04-09 | 18 | 0d |  | JS; GL 7; GL 8; GL 6; DT | 120h | 7,320 |
| 20 | 6 | **CONSTRUCTION OF SOLAR CANOPY** | 49d | 2024-04-10 | 2024-06-17 |  | 0d |  |  | 3632h | 275,680 |
| 21 | 6.1 | Trenching and Conduit Placement | 5d | 2024-04-10 | 2024-04-16 | 19 | 0d |  | EE; GL 1; ET 1; TT; ET 2; GL 2 | 240h | 17,200 |
| 22 | 6.2 | Assemble steel columns, steel cross beams & purlin | 15d | 2024-04-17 | 2024-05-07 | 21 | 0d |  | JS; SL; DC; IW 2; IW 3; IW 4; IW 5; IW 6; DT; IW 1 | 1200h | 105,600 |
| 23 | 6.3 | Installation Of Solar Panels, Batteries & Charge Controllers | 15d | 2024-05-08 | 2024-05-28 | 22 | 0d |  | SL; DC; IW 1; EE; ET 1; ET 2; ET 3; ET 4; GL 3; GL 4; GL 5; GL 6 | 1440h | 100,800 |
| 24 | 6.4 | Connect Solar System to Breaker Panel, Transformer, overhead light& Main Distribution Box | 5d | 2024-05-29 | 2024-06-04 | 23 | 0d |  | SL; DC; ET 5; ET 6; EE; GL 7; GL 8 | 280h | 21,200 |
| 25 | 6.5 | Installation of IP Camera, LED Indicator, Parking guidance Signage & Enterance display | 8d | 2024-06-05 | 2024-06-14 | 24 | 0d |  | EE; ET 1; ET 2; GL 2; GL 3; ET 3; GL 1 | 448h | 28,480 |
| 26 | 6.6 | Inspect Structure, Circuit & Angle of mounting | 1d | 2024-06-17 | 2024-06-17 | 25 | 0d |  | CE; JS; EE | 24h | 2,400 |

| ID | WBS | Task | Duration | Start | Finish | Predecessors | Total slack | Resources | Work | Cost |
| --- | --- | --- | --- | --- | --- | --- | --- | --- | --- | --- |
| 27 | 7 | **INSTALLATION OF ELECTRIC VEHICLE CHARGER** | 31d | 2024-06-18 | 2024-07-30 |  | 0d |  | 2480h | 195,200 |
| 28 | 7.1 | Trenching and Conduit Placement | 4d | 2024-06-18 | 2024-06-21 | 26 | 0d | EE; TT; ET 4; GL 4; GL 5; ET 5 | 192h | 13,760 |
| 29 | 7.2 | Installation of EV Charging Station | 22d | 2024-06-24 | 2024-07-23 | 28 | 0d | ET 5; ET 6; SL; DC; DT; EE; ET 1; ET 2; ET 3; ET 4; GL 6; GL 7 | 2112h | 167,200 |
| 30 | 7.3 | Connect EV Charger to Building Electrical System | 4d | 2024-07-24 | 2024-07-29 | 29 | 0d | ET 1; ET 2; SL; EE; GL 8 | 160h | 12,640 |
| 31 | 7.4 | Inspect Electrical | 1d | 2024-07-30 | 2024-07-30 | 30 | 0d | JS; EE | 16h | 1,600 |
| 32 | 8 | CRITICAL PATH END (milestone) | 1d | 2024-07-31 | 2024-07-31 | 31 | 0d |  |  |  |
| 33 | 9 | Project Buffer | 40d | 2024-08-01 | 2024-09-25 | 32 | 0d | Project Buffer | 320h |  |
| 34 | 10 | PROJECT COMMIT (milestone) | 1d | 2024-09-26 | 2024-09-26 | 33 | 0d |  |  |  |
